Schedule from a web Gantt chart, 2025-04-15 to 2025-05-02.
Saturdays and Sundays are off

## Schedule

| ID | WBS | Task | Duration | Start | Finish |
| --- | --- | --- | --- | --- | --- |
| 2 | 1 | 需求收集 | 14d | 2025-04-15 | 2025-05-02 |
| 3 | 2 | 原型设计 | 14d | 2025-04-15 | 2025-05-02 |
| 4 | 3 | 接口功能拆分设计 | 10d | 2025-04-21 | 2025-05-02 |
| 5 | 4 | 确定所需周边系统 | 5d | 2025-04-28 | 2025-05-02 |
